# World_Stories_01

How a schedule from MS Project changed from version to version. A marks actual dates.

## Version 1 (saved 2014-08-12)

Note of the change: txt

| ID | WBS | Task | Duration | Start | Finish | Predecessors | Complete | Total float |
| --- | --- | --- | --- | --- | --- | --- | --- | --- |
| 1 | 1 | **R&D Steps** | 7d | 2014-08-11 A | 2014-08-19 |  | 22% | -6d |
| 2 |  | Music (available resources) | 1d | 2014-08-11 | 2014-08-11 |  |  | -1d |
| 3 |  | FBX compatible rigging options (+Unity humanoid) | 1d | 2014-08-11 A | 2014-08-11 A | 2 | 100% |  |
| 4 |  | Engine selection | 1d | 2014-08-11 A | 2014-08-11 A | 3 | 100% |  |
| 5 |  | multiplayer | 1d | 2014-08-12 | 2014-08-12 | 4 |  | -7d |
| 6 |  | Native (IOS, Android, WP8) achievement and award system | 1d | 2014-08-13 | 2014-08-13 | 5 |  | -7d |
| 7 |  | Architecture/ structure definitions (asset management structure) | 1d | 2014-08-14 | 2014-08-14 | 6 |  | -7d |
| 8 |  | Weekly deadline definitions | 1d | 2014-08-15 | 2014-08-15 | 7 |  | -7d |
| 9 |  | Preparing of the data sheet of requirements (like size limit, etc.) for each of the platform submissions. | 0.5d | 2014-08-18 | 2014-08-18 | 8 |  | -7d |
| 10 |  | Visual effects and real-time render passes available on mobile platforms | 0.5d | 2014-08-18 | 2014-08-18 | 9 |  | -7d |
| 11 |  | In-App purchase | 1d | 2014-08-19 | 2014-08-19 | 10 |  | -7d |
| 12 | 2 | **Alpha releases (1 story)** | 38.23d | 2014-08-11 A | 2014-10-02 | 1 | 5% | 0d |
| 13 | 2.1 | **Pre-production** | 13.1d | 2014-08-11 A | 2014-08-28 |  | 13% | -6.1d |
| 14 |  | Script | 1d | 2014-08-11 A | 2014-08-20 |  | 90% | -6.1d |
| 15 |  | Story boards | 1d | 2014-08-20 | 2014-08-21 | 14 |  | -6.1d |
| 16 |  | Concept / Mood Paintings | 2d | 2014-08-21 | 2014-08-25 | 15 |  | -6.1d |
| 17 |  | Animation mockup (2D) | 1d | 2014-08-27 | 2014-08-28 | 16, 18 |  | -6.1d |
| 18 |  | Music (test) | 1d | 2014-08-26 | 2014-08-27 | 19 |  | -6.1d |
| 19 |  | Naration (test) | 1d | 2014-08-25 | 2014-08-26 | 16 |  | -6.1d |
| 20 |  | Trailer (Alpha) | 0d | 2014-08-28 | 2014-08-28 | 17 |  | -6.1d |
| 21 | 2.2 | **Production** | 31.23d | 2014-08-20 A | 2014-10-02 | 13 | 3% | 0d |
| 22 |  | Blueprints | 2d | 2014-08-20 A | 2014-08-29 |  | 12% | 0d |
| 23 |  | 3D Modeling | 1d | 2014-08-22 A | 2014-09-01 | 22 | 15% | 0d |
| 24 |  | UW & Texturing | 3d | 2014-08-25 A | 2014-09-04 | 23 | 12% | 0d |
| 25 |  | Rigging | 2d | 2014-08-28 A | 2014-09-08 | 24 | 6% | 0d |
| 26 |  | Animation | 1d | 2014-09-08 | 2014-09-09 | 25 |  | 0d |
| 27 | 2.2.6 | **Sounds** | 3d | 2014-08-28 | 2014-09-02 |  |  | 21.13d |
| 28 |  | Sound fx | 1d | 2014-08-28 | 2014-08-29 |  |  | 21.13d |
| 29 |  | Musics | 1d | 2014-08-29 | 2014-09-01 | 28 |  | 21.13d |
| 30 |  | Narations | 1d | 2014-09-01 | 2014-09-02 | 29 |  | 21.13d |
| 31 |  | Trailer release | 1d | 2014-09-09 | 2014-09-10 | 26, 27 |  | 16d |
| 32 | 2.2.8 | **Unity dev** | 12d | 2014-09-09 | 2014-09-25 | 26 |  | 0d |
| 33 |  | Game logic | 1d | 2014-09-09 | 2014-09-10 |  |  | 0d |
| 34 |  | Importing assets | 1d | 2014-09-10 | 2014-09-11 | 33 |  | 0d |
| 35 |  | GUI Design + dev | 2d | 2014-09-11 | 2014-09-15 | 34 |  | 0d |
| 36 |  | Programming | 7d | 2014-09-15 | 2014-09-24 | 35 |  | 0d |
| 37 |  | Alpha builds | 1d | 2014-09-24 | 2014-09-25 | 36 |  | 0d |
| 38 |  | Primary test on devices | 1d | 2014-09-25 | 2014-09-26 | 32 |  | 0d |
| 39 |  | Debugging | 2d | 2014-09-26 | 2014-09-30 | 38 |  |  |
| 40 |  | Market place submissions | 1d | 2014-09-30 | 2014-10-01 | 39 |  | 0d |
| 41 |  | Debugging / resubmitting | 1d | 2014-10-01 | 2014-10-02 | 40 |  |  |
| 42 |  | Alpha 2 release + Trailler | 0d | 2014-10-02 | 2014-10-02 | 41 |  | 0d |
| 43 | 3 | **Funds** | 19d | 2014-10-02 | 2014-10-29 | 12 |  | 0d |
| 44 |  | Research, studies, planning | 2d | 2014-10-02 | 2014-10-06 |  |  | 17d |
| 45 | 3.2 | **Content creation** | 14d | 2014-10-02 | 2014-10-22 |  |  | 0d |
| 46 |  | Text | 2d | 2014-10-02 | 2014-10-06 |  |  | 0d |
| 47 |  | Images | 3d | 2014-10-06 | 2014-10-09 | 46 |  | 0d |
| 48 |  | Scripts | 2d | 2014-10-09 | 2014-10-13 | 47 |  | 0d |
| 49 |  | Filming sessions | 2d | 2014-10-13 | 2014-10-15 | 48 |  | 0d |
| 50 |  | FX + Editing | 2d | 2014-10-15 | 2014-10-17 | 49 |  | 0d |
| 51 |  | Formatting | 2d | 2014-10-17 | 2014-10-21 | 50 |  | 0d |
| 52 |  | Final preparations | 1d | 2014-10-21 | 2014-10-22 | 51 |  | 0d |
| 53 |  | Submitions | 2d | 2014-10-22 | 2014-10-24 | 45 |  | 3d |
| 54 |  | Advertising, social networks, etc | 5d | 2014-10-22 | 2014-10-29 | 45 |  | 0d |
| 55 | 3.5 | **Private fundings** | 11d | 2014-10-02 | 2014-10-17 |  |  | 8d |
| 56 |  | Research & planning | 3d | 2014-10-02 | 2014-10-07 |  |  | 8d |
| 57 |  | Proposal preparations | 5d | 2014-10-07 | 2014-10-14 | 56 |  | 8d |
| 58 |  | Submission/ communications | 3d | 2014-10-14 | 2014-10-17 | 57 |  | 8d |
| 59 | 4 | **Beta release** | 1d | 2014-08-11 | 2014-08-11 |  |  | 0d |
| 60 |  | <New Task> | 1d | 2014-08-11 | 2014-08-11 |  |  |  |
| 61 | 5 | **Final Release (V1)** | 1d | 2014-08-11 | 2014-08-11 |  |  | 0d |
| 62 |  | <New Task> | 1d | 2014-08-11 | 2014-08-11 |  |  |  |
| 63 | 6 | **Side Products** | 1d? | 2014-08-11 | 2014-08-11 |  |  | 56.23d |
| 64 |  | Postal & Thank-you cards | 1d? | 2014-08-11 | 2014-08-11 |  |  | 56.23d |
| 65 |  | Stickers | 1d? | 2014-08-11 | 2014-08-11 |  |  | 56.23d |
| 66 |  | Coupons and promotion cards | 1d? | 2014-08-11 | 2014-08-11 |  |  | 56.23d |
| 67 |  | Card-board models | 1d? | 2014-08-11 | 2014-08-11 |  |  | 56.23d |
| 68 |  | Silk-screen | 1d | 2014-08-11 | 2014-08-11 |  |  | 56.23d |

## Version 2 (saved 2014-08-12)

Note of the change: txt

Last finish 2014-10-29 → 2015-05-07 (+190d).

Added:

| ID | Task | Duration | Start | Finish | Predecessors |
| --- | --- | --- | --- | --- | --- |
| 59 | Project plan changes & refinments | 2d | 2014-10-29 | 2014-10-31 | 43 |
| 60 | ALPHA PHASE DONE! | 0d | 2014-10-31 | 2014-10-31 | 59 |
| 62 | **Pre-production (3 stories)** | 17d | 2014-10-31 | 2014-11-25 |  |
| 64 | Story boards | 3d | 2014-11-04 | 2014-11-07 | 63 |
| 65 | Concept / Mood Paintings | 6d | 2014-11-07 | 2014-11-17 | 64 |
| 66 | Animation mockup (2D) | 5d | 2014-11-18 | 2014-11-25 | 65, 67 |
| 67 | Music | 6d | 2014-11-10 | 2014-11-18 | 68 |
| 68 | Naration | 6d | 2014-10-31 | 2014-11-10 |  |
| 69 | Trailer ( Beta ) | 0d | 2014-11-25 | 2014-11-25 | 66 |
| 70 | **Production** | 67d | 2014-10-31 | 2015-02-03 | 13 |
| 71 | Blueprints | 6d | 2014-10-31 | 2014-11-10 |  |
| 72 | 3D Modeling | 6d | 2014-11-10 | 2014-11-18 | 71 |
| 73 | UW & Texturing | 6d | 2014-11-18 | 2014-11-26 | 72 |
| 74 | Rigging | 6d | 2014-11-26 | 2014-12-04 | 73 |
| 75 | Animation | 6d | 2014-12-04 | 2014-12-12 | 74 |
| 76 | **Sounds** | 18d | 2014-10-31 | 2014-11-26 |  |
| 77 | Sound fx | 6d | 2014-10-31 | 2014-11-10 |  |
| 78 | Musics | 6d | 2014-11-10 | 2014-11-18 | 77 |
| 79 | Narations | 6d | 2014-11-18 | 2014-11-26 | 78 |
| 80 | Trailer release | 0d | 2014-12-12 | 2014-12-12 | 75, 76 |
| 81 | **Unity dev** | 28d | 2014-12-12 | 2015-01-21 | 75 |
| 82 | Game logic | 5d | 2014-12-12 | 2014-12-19 |  |
| 83 | Importing assets | 2d | 2014-12-19 | 2014-12-23 | 82 |
| 84 | GUI Design + dev | 3d | 2014-12-23 | 2014-12-26 | 83 |
| 85 | Programming | 15d | 2014-12-26 | 2015-01-16 | 84 |
| 86 | Beta builds | 3d | 2015-01-16 | 2015-01-21 | 85 |
| 87 | Primary test on devices | 2d | 2015-01-21 | 2015-01-23 | 81 |
| 88 | Debugging | 3d | 2015-01-23 | 2015-01-28 | 87 |
| 89 | Market place submissions | 2d | 2015-01-28 | 2015-01-30 | 88 |
| 90 | Debugging / resubmitting | 2d | 2015-01-30 | 2015-02-03 | 89 |
| 91 | Beta release + Trailler | 0d | 2015-02-03 | 2015-02-03 | 70 |
| 98 | BETA PHASE DONE! | 0d | 2015-02-03 | 2015-02-03 | 61 |
| 100 | **Pre-production (+ 3-6 stories)** | 17d | 2015-02-03 | 2015-02-26 |  |
| 101 | Script | 2d | 2015-02-03 | 2015-02-05 |  |
| 102 | Story boards | 3d | 2015-02-05 | 2015-02-10 | 101 |
| 103 | Concept / Mood Paintings | 6d | 2015-02-10 | 2015-02-18 | 102 |
| 104 | Animation mockup (2D) | 5d | 2015-02-19 | 2015-02-26 | 103, 105 |
| 105 | Music | 6d | 2015-02-11 | 2015-02-19 | 106 |
| 106 | Naration | 6d | 2015-02-03 | 2015-02-11 |  |
| 107 | Trailer ( Final ) | 0d | 2015-02-26 | 2015-02-26 | 104 |
| 108 | **Production** | 67d | 2015-02-03 | 2015-05-07 | 13 |
| 109 | Blueprints | 6d | 2015-02-03 | 2015-02-11 |  |
| 110 | 3D Modeling | 6d | 2015-02-11 | 2015-02-19 | 109 |
| 111 | UW & Texturing | 6d | 2015-02-19 | 2015-02-27 | 110 |
| 112 | Rigging | 6d | 2015-02-27 | 2015-03-09 | 111 |
| 113 | Animation | 6d | 2015-03-09 | 2015-03-17 | 112 |
| 114 | **Sounds** | 18d | 2015-02-03 | 2015-02-27 |  |
| 115 | Sound fx | 6d | 2015-02-03 | 2015-02-11 |  |
| 116 | Musics | 6d | 2015-02-11 | 2015-02-19 | 115 |
| 117 | Narations | 6d | 2015-02-19 | 2015-02-27 | 116 |
| 118 | Trailer release | 0d | 2015-03-17 | 2015-03-17 | 113, 114 |
| 119 | **Unity dev** | 28d | 2015-03-17 | 2015-04-24 | 113 |
| 120 | Game logic | 5d | 2015-03-17 | 2015-03-24 |  |
| 121 | Importing assets | 2d | 2015-03-24 | 2015-03-26 | 120 |
| 122 | GUI Design + dev | 3d | 2015-03-26 | 2015-03-31 | 121 |
| 123 | Programming | 15d | 2015-03-31 | 2015-04-21 | 122 |
| 124 | Beta builds | 3d | 2015-04-21 | 2015-04-24 | 123 |
| 125 | Primary test on devices | 2d | 2015-04-24 | 2015-04-28 | 119 |
| 126 | Debugging | 3d | 2015-04-28 | 2015-05-01 | 125 |
| 127 | Market place submissions | 2d | 2015-05-01 | 2015-05-05 | 126 |
| 128 | Debugging / resubmitting | 2d | 2015-05-05 | 2015-05-07 | 127 |
| 129 | Final release + Trailler | 0d | 2015-05-07 | 2015-05-07 | 108 |
| 130 | Version 1.0 Done! | 0d | 2015-05-07 | 2015-05-07 | 99 |

Removed: 62 <New Task>

Changed:

| ID | Task | Start | Finish | Duration | Total float | Predecessors | Other |
| --- | --- | --- | --- | --- | --- | --- | --- |
| 61 | **Beta release** | 2014-08-11 → 2014-10-31 (+81d) | 2014-08-11 → 2015-02-03 (+176d) | 1d → 67d |  | none → 59 |  |
| 63 | Script | 2014-08-11 → 2014-10-31 (+81d) | 2014-08-11 → 2014-11-04 (+85d) | 1d → 2d | none → 51d |  | was named <New Task> |
| 92 | **Side Products** | 2014-08-11 → 2014-10-31 (+81d) | 2014-08-11 → 2014-12-01 (+112d) | 1d? → 21d | 56.23d → 113d | none → 60 |  |
| 93 | Postal & Thank-you cards | 2014-08-11 → 2014-10-31 (+81d) | 2014-08-11 → 2014-12-01 (+112d) | 1d? → 21d | 56.23d → 113d |  |  |
| 94 | Stickers | 2014-08-11 → 2014-10-31 (+81d) | 2014-08-11 → 2014-12-01 (+112d) | 1d? → 21d | 56.23d → 113d |  |  |
| 95 | Coupons and promotion cards | 2014-08-11 → 2014-10-31 (+81d) | 2014-08-11 → 2014-12-01 (+112d) | 1d? → 21d | 56.23d → 113d |  |  |
| 96 | Card-board models | 2014-08-11 → 2014-10-31 (+81d) | 2014-08-11 → 2014-12-01 (+112d) | 1d? → 21d | 56.23d → 113d |  |  |
| 97 | Silk-screen | 2014-08-11 → 2014-10-31 (+81d) | 2014-08-11 → 2014-12-01 (+112d) | 1d → 21d | 56.23d → 113d |  |  |
| 99 | **Final Release (V1)** | 2014-08-11 → 2015-02-03 (+176d) | 2014-08-11 → 2015-05-07 (+269d) | 1d → 67d |  | none → 61 |  |

## Version 3 (saved 2014-08-12)

Note of the change: txt

Last finish stays 2015-05-07.

Added:

| ID | Task | Duration | Start | Finish |
| --- | --- | --- | --- | --- |
| 11 | Copy-right checks | 1d | 2014-08-11 | 2014-08-11 |
| 98 | Story books (illustrated with game arts) | 21d | 2014-10-31 | 2014-12-01 |

Changed:

| ID | Task | Complete |
| --- | --- | --- |
| 1 | **R&D Steps** | 22% → 20% |

## Version 4 (saved 2014-08-13)

Note of the change: txt

Last finish stays 2015-05-07.

Added:

| ID | Task | Duration | Start | Finish |
| --- | --- | --- | --- | --- |
| 44 | Project web site | 15d | 2014-08-11 | 2014-08-29 |
